# XING_PRO320009_A0

How a schedule from MS Project changed from version to version. A marks actual dates.

## Version 1 (saved 2020-10-15, file XDOC_PLA320001_A0.mpp)

Note of the change: Create XDOC_PLA320001_A0.mpp

| ID | WBS | Task | Duration | Start | Finish | Predecessors | Total float | Constraint |
| --- | --- | --- | --- | --- | --- | --- | --- | --- |
| 1 | 1 | **INGENIERÍA/PLACA SIMOTION 4** | 36.38d | 2020-10-14 | 2020-12-10 |  | 9.38d |  |
| 2 |  | Selección materiales principales (SIEMENS) | 1d | 2020-10-14 | 2020-10-15 |  | 60.88d |  |
| 3 |  | VISITA A PLANTA | 1d | 2020-10-28 | 2020-10-29 |  | 0d | start no earlier than 2020-10-28 |
| 4 |  | Selección materiales menores | 3d | 2020-10-29 | 2020-11-03 | 3 | 0d |  |
| 5 |  | Compra de materiales Siemens | 1d | 2020-10-15 | 2020-10-16 | 2 | 60.88d |  |
| 6 |  | Compra materiales menores | 1d | 2020-11-03 | 2020-11-04 | 4 | 0d |  |
| 7 |  | Recepción materiales | 0d | 2020-11-19 | 2020-11-19 | 6FS+10d | 0d |  |
| 8 |  | Confección de planos eléctricos | 3d | 2020-11-19 | 2020-11-25 | 7 | 0d |  |
| 9 |  | Armado de tablero eléctrico (Placa Simotion 4) | 4d | 2020-11-25 | 2020-12-01 | 8 | 0d |  |
| 10 |  | FAT Simotion 4 | 1d | 2020-12-01 | 2020-12-02 | 9 | 0d |  |
| 11 |  | Placa Simotion 4 OK | 0d | 2020-12-02 | 2020-12-02 | 10 | 0d |  |
| 12 |  | Entrega placa Simotion 4 | 1d | 2020-12-09 | 2020-12-10 | 24, 11 | 0d |  |
| 13 | 2 | **SOFTWARE SIMOTION 4** | 35.38d | 2020-10-14 | 2020-12-09 |  | 0d |  |
| 14 |  | Acondicionar versiones de software | 3d | 2020-10-14 | 2020-10-19 |  | 16.38d |  |
| 15 |  | Abrir y estudiar programa original de BSL | 4h | 2020-10-19 | 2020-10-19 | 14 | 16.38d |  |
| 16 |  | Abrir y estudiar programa original de CS | 4h | 2020-10-19 | 2020-10-20 | 15 | 16.38d |  |
| 17 |  | Abrir y estudiar Programa ejemplo de Simotion | 2d | 2020-10-20 | 2020-10-22 | 16 | 16.38d |  |
| 18 | 2.5 | **Programación Simotion 4** | 29.38d | 2020-10-22 | 2020-12-09 | 17 | 0d |  |
| 19 |  | Estudio y configuración doble comunicación | 1d | 2020-10-22 | 2020-10-23 |  | 16.38d |  |
| 20 |  | Configuración Hw | 1d | 2020-10-23 | 2020-10-26 | 19 | 16.38d |  |
| 21 |  | Definición estructura de programa | 1d | 2020-10-26 | 2020-10-27 | 20 | 16.38d |  |
| 22 |  | Programación Simotion 4 | 7d | 2020-10-27 | 2020-11-06 | 21 | 16.38d |  |
| 23 |  | Pruebas de software | 3d | 2020-12-02 | 2020-12-09 | 22, 11 | 0d |  |
| 24 |  | Programa Simotion 4 OK | 0d | 2020-12-09 | 2020-12-09 | 23 | 0d |  |
| 25 | 3 | **PEM Simotion 4** | 10.5d | 2020-12-10 | 2020-12-29 |  | 0d |  |
| 26 |  | Montaje y conexionado | 2d | 2020-12-10 | 2020-12-14 | 12 | 0d |  |
| 27 |  | SAT | 1d | 2020-12-15 | 2020-12-16 | 26 | 0d |  |
| 28 |  | Carga modificaciones PLC BSL | 2h | 2020-12-16 | 2020-12-16 | 27 | 23d |  |
| 29 |  | Pruebas comunicación PLC BSL-Simotion 4 | 2h | 2020-12-16 | 2020-12-16 | 28 | 23d |  |
| 30 |  | Carga modificaciones PLC CS | 2h | 2020-12-16 | 2020-12-16 | 27 | 0d |  |
| 31 |  | Pruebas comunicación PLC CS-Simotion 4 | 2h | 2020-12-16 | 2020-12-16 | 30 | 0d |  |
| 32 |  | Pruebas de movimientos Simotion | 1d | 2020-12-16 | 2020-12-17 | 31 | 0d |  |
| 33 |  | Pruebas en vacío | 2d | 2020-12-17 | 2020-12-21 | 32 | 0d |  |
| 34 |  | Pruebas "Barra fantasma" | 1d | 2020-12-21 | 2020-12-22 | 33 | 0d |  |
| 35 |  | Pruebas con material | 3d | 2020-12-22 | 2020-12-29 | 34 | 0d |  |
| 36 | 4 | **INGENIERÍA/PLACA SIMOTION 2** | 33.38d | 2020-10-14 | 2020-12-03 |  | 29.38d |  |
| 37 |  | Selección materiales principales (SIEMENS) | 1d | 2020-10-14 | 2020-10-15 |  | 60.88d |  |
| 38 |  | Selección materiales menores | 3d | 2020-10-29 | 2020-11-03 | 3 | 19d |  |
| 39 |  | Compra de materiales Siemens | 1d | 2020-10-15 | 2020-10-16 | 37 | 60.88d |  |
| 40 |  | Compra materiales menores | 1d | 2020-11-03 | 2020-11-04 | 38 | 19d |  |
| 41 |  | Recepción materiales | 0d | 2020-11-19 | 2020-11-19 | 40FS+10d | 19d |  |
| 42 |  | Confección de planos eléctricos | 3d | 2020-11-19 | 2020-11-25 | 41 | 19d |  |
| 43 |  | Armado de tablero eléctrico (Placa Simotion 2) | 4d | 2020-11-25 | 2020-12-01 | 42 | 19d |  |
| 44 |  | FAT Simotion 2 | 1d | 2020-12-01 | 2020-12-02 | 43 | 19d |  |
| 45 |  | Placa Simotion 2 OK | 0d | 2020-12-02 | 2020-12-02 | 44 | 19d |  |
| 46 |  | Entrega placa Simotion 2 | 1d | 2020-12-02 | 2020-12-03 | 45 | 19d |  |
| 47 | 5 | **SOFTWARE SIMOTION 2** | 16d? | 2020-12-29 | 2021-01-22 |  | 0d |  |
| 48 |  | Abrir y estudiar programa original de SH18BM | 1d | 2020-12-29 | 2020-12-30 | 35 | 0d |  |
| 49 |  | Abrir y estudiar programa original de SH1B | 1d | 2020-12-30 | 2020-12-31 | 48 | 0d |  |
| 50 |  | Abrir y estudiar programa original de SH1B | 1d? | 2020-12-31 | 2021-01-04 | 49 | 0d |  |
| 51 | 5.4 | **Programación Simotion 2** | 13d | 2021-01-04 | 2021-01-22 | 50 | 0d |  |
| 52 |  | Estudio y configuración doble comunicación | 1d | 2021-01-04 | 2021-01-05 |  | 0d |  |
| 53 |  | Configuración Hw | 1d | 2021-01-05 | 2021-01-06 | 52 | 0d |  |
| 54 |  | Definición estructura de programa | 1d | 2021-01-06 | 2021-01-07 | 53 | 0d |  |
| 55 |  | Programación Simotion 2 | 7d | 2021-01-07 | 2021-01-18 | 54 | 0d |  |
| 56 |  | Pruebas de software | 3d | 2021-01-18 | 2021-01-22 | 45, 55 | 0d |  |
| 57 |  | Programa Simotion 2 OK | 0d | 2021-01-22 | 2021-01-22 | 56 | 0d |  |
| 58 | 6 | **PEM Simotion 2** | 21d | 2020-12-03 | 2021-01-11 |  | 8.5d |  |
| 59 |  | Montaje y conexionado | 2d | 2020-12-03 | 2020-12-09 | 46 | 19d |  |
| 60 |  | SAT | 1d | 2020-12-09 | 2020-12-10 | 59 | 19d |  |
| 61 |  | Carga modificaciones PLC CS | 2h | 2020-12-29 | 2020-12-29 | 60, 35 | 8.5d |  |
| 62 |  | Pruebas comunicación PLC CS-Simotion 2 | 2h | 2020-12-29 | 2020-12-29 | 61 | 8.5d |  |
| 63 |  | Pruebas de movimientos Simotion | 1d | 2020-12-29 | 2020-12-30 | 62 | 8.5d |  |
| 64 |  | Pruebas en vacío | 2d | 2020-12-30 | 2021-01-04 | 63 | 8.5d |  |
| 65 |  | Pruebas "Barra fantasma" | 1d | 2021-01-04 | 2021-01-05 | 64 | 8.5d |  |
| 66 |  | Pruebas con material | 3d | 2021-01-05 | 2021-01-11 | 65 | 8.5d |  |

## Version 2 (saved 2020-10-27, file XDOC_PLA320001_A1.mpp)

Note of the change: update Planning

Last finish 2021-01-22 → 2021-04-26 (+94d). Complete tasks 0 → 1.

Added:

| ID | Task | Duration | Start | Finish | Predecessors | Constraint | Resources |
| --- | --- | --- | --- | --- | --- | --- | --- |
| 1 | **Relevo Previo** | 42d | 2020-10-14 A | 2020-12-18 |  |  |  |
| 8 | Recepción de materiales Siemens | 0d | 2020-12-18 | 2020-12-18 | 3FS+2mo | start no earlier than 2020-12-18 |  |
| 12 | Montaje de materiales Siemens | 3d | 2020-12-18 | 2020-12-24 | 8 |  | GAJ; CRJ |
| 59 | **SOFTWARE SIMOTION 1** | 45d | 2020-12-29 | 2021-03-10 |  |  |  |
| 60 | Abrir y estudiar programa original de SH6 | 1d | 2020-12-29 | 2020-12-30 | 49 |  | FRD |
| 61 | Abrir y estudiar programa original de SH12 | 1d | 2020-12-30 | 2020-12-31 | 60 |  |  |
| 62 | **Programación Simotion 1** | 43d | 2020-12-31 | 2021-03-10 | 61 |  |  |
| 63 | Estudio y configuración doble comunicación | 1d | 2020-12-31 | 2021-01-04 |  |  | FRD |
| 64 | Configuración Hw | 1d | 2021-01-04 | 2021-01-05 | 63 |  | FRD |
| 65 | Definición estructura de programa | 1d | 2021-01-05 | 2021-01-29 | 64 |  | FRD |
| 66 | Programación Simotion1 | 7d | 2021-01-29 | 2021-03-08 | 65 |  | FRD |
| 67 | Pruebas de software | 2d | 2021-03-08 | 2021-03-10 | 66 |  | FRD |
| 68 | Programa Simotion 1 OK | 0d | 2021-03-10 | 2021-03-10 | 67 |  |  |
| 69 | **PEM Simotion 1** | 39.62d | 2021-01-18 | 2021-03-19 |  |  |  |
| 70 | Montaje y conexionado | 2d | 2021-01-18 | 2021-01-20 |  | start no earlier than 2021-01-18 | CRJ |
| 71 | SAT | 1d | 2021-01-20 | 2021-01-21 | 70 |  | CRJ |
| 72 | Carga modificaciones PLC CS | 2h | 2021-03-10 | 2021-03-10 | 68, 58 |  | FRD |
| 73 | Pruebas comunicación PLC CS-Simotion 1 | 2h | 2021-03-10 | 2021-03-10 | 72 |  | FRD |
| 74 | Pruebas de movimientos Simotion | 1d | 2021-03-10 | 2021-03-11 | 73 |  | FRD |
| 75 | Pruebas en vacío | 1d | 2021-03-12 | 2021-03-15 | 74 |  | FRD |
| 76 | Pruebas "Barra fantasma" | 1d | 2021-03-15 | 2021-03-16 | 75 |  | FRD |
| 77 | Pruebas con material | 3d | 2021-03-16 | 2021-03-19 | 76 |  | FRD |
| 78 | **SOFTWARE SIMOTION 3** | 13d | 2021-03-23 | 2021-04-14 |  |  |  |
| 79 | Abrir y estudiar programa original de SH18RM | 1d | 2021-03-23 | 2021-03-25 | 68 |  | FRD |
| 80 | **Programación Simotion 1** | 12d | 2021-03-25 | 2021-04-14 |  |  |  |
| 81 | Estudio y configuración doble comunicación | 1d | 2021-03-25 | 2021-03-26 | 79 |  | FRD |
| 82 | Configuración Hw | 1d | 2021-03-26 | 2021-03-29 | 81 |  | FRD |
| 83 | Definición estructura de programa | 1d | 2021-03-29 | 2021-03-30 | 82 |  | FRD |
| 84 | Programación Simotion1 | 7d | 2021-03-30 | 2021-04-12 | 83 |  | FRD |
| 85 | Pruebas de software | 2d | 2021-04-12 | 2021-04-14 | 84 |  | FRD |
| 86 | Programa Simotion 1 OK | 0d | 2021-04-14 | 2021-04-14 | 85 |  |  |
| 87 | **PEM Simotion 3** | 52.62d | 2021-02-01 | 2021-04-26 |  |  |  |
| 88 | Montaje y conexionado | 2d | 2021-02-01 | 2021-02-03 |  | start no earlier than 2021-02-01 | CRJ |
| 89 | SAT | 1d | 2021-02-03 | 2021-02-04 | 88 |  | CRJ |
| 90 | Carga modificaciones PLC CS | 2h | 2021-04-14 | 2021-04-14 | 86, 77 |  | FRD |
| 91 | Pruebas comunicación PLC CS-Simotion 1 | 2h | 2021-04-14 | 2021-04-14 | 90 |  | FRD |
| 92 | Pruebas de movimientos Simotion | 1d | 2021-04-14 | 2021-04-15 | 91 |  | FRD |
| 93 | Pruebas en vacío | 2d | 2021-04-15 | 2021-04-19 | 92 |  | FRD |
| 94 | Pruebas "Barra fantasma" | 1d | 2021-04-19 | 2021-04-20 | 93 |  | FRD |
| 95 | Pruebas con material | 3d | 2021-04-21 | 2021-04-26 | 94 |  | FRD |

Removed: 36 INGENIERÍA/PLACA SIMOTION 2; 37 Selección materiales principales (SIEMENS); 38 Selección materiales menores; 39 Compra de materiales Siemens; 40 Compra materiales menores; 41 Recepción materiales; 42 Confección de planos eléctricos; 43 Armado de tablero eléctrico (Placa Simotion 2); 44 FAT Simotion 2; 45 Placa Simotion 2 OK; 46 Entrega placa Simotion 2

Changed:

| ID | Task | Start | Finish | Duration | Complete | Total float | Predecessors | Other |
| --- | --- | --- | --- | --- | --- | --- | --- | --- |
| 2 | Selección materiales principales (SIEMENS) | 2020-10-14 A | 2020-10-15 A |  | 0% → 100% | 60.88d → none |  |  |
| 3 | Compra de materiales Siemens | 2020-10-15 A |  |  | 0% → 50% | 60.88d → 42.56d |  |  |
| 4 | VISITA A PLANTA | 2020-10-28 → 2020-11-04 (+7d) | 2020-10-29 → 2020-11-05 (+7d) |  |  | 0d → 2d |  | constraint start no earlier than 2020-10-28 → start no earlier than 2020-11-04 |
| 5 | Selección materiales menores | 2020-10-29 → 2020-11-05 A (+7d) | 2020-11-03 → 2020-11-11 (+8d) | 3d → 4d | 0% → 50% | 0d → 0.25d |  |  |
| 6 | Compra materiales menores | 2020-11-03 → 2020-11-11 A (+8d) | 2020-11-04 → 2020-11-12 (+8d) |  | 0% → 25% | 0d → 52.5d |  |  |
| 7 | Recepción materiales menores | 2020-11-19 → 2020-11-30 (+11d) | 2020-11-19 → 2020-11-30 (+11d) |  |  | 0d → 35.12d |  | was named Recepción materiales |
| 9 | **INGENIERÍA/PLACA SIMOTION** | 2020-10-14 → 2020-11-11 A (+28d) | 2020-12-10 → 2020-12-29 (+19d) | 36.38d → 27.94d | 0% → 13% | 9.38d → 74.06d |  | was named INGENIERÍA/PLACA SIMOTION 4 |
| 10 | Confección de planos eléctricos | 2020-11-19 → 2020-11-11 A (-8d) | 2020-11-25 → 2020-11-30 (+5d) | 3d → 11d | 0% → 25% | 0d → 91d | 7 → 5 |  |
| 11 | Armado de tableros eléctricos con materiales menores | 2020-11-25 → 2020-11-30 (+5d) | 2020-12-01 → 2020-12-09 (+8d) | 4d → 5d |  | 0d → 52.5d | 10 → 7 | was named Armado de tablero eléctrico (Placa Simotion 4); resources GAJ → GAJ; CRJ |
| 13 | FAT | 2020-12-01 → 2020-12-24 (+23d) | 2020-12-02 → 2020-12-28 (+26d) |  |  | 0d → 42.56d | 11 → 11, 12 | was named FAT Simotion 4 |
| 14 | Placas Simotion OK | 2020-12-02 → 2020-12-28 (+26d) | 2020-12-02 → 2020-12-28 (+26d) |  |  | 0d → 42.56d |  | was named Placa Simotion 4 OK; resources none → GAJ; CRJ |
| 15 | Entrega placas Simotion | 2020-12-09 → 2020-12-28 (+19d) | 2020-12-10 → 2020-12-29 (+19d) |  |  | 0d → 42.56d |  | was named Entrega placa Simotion 4; resources none → GAJ; CRJ |
| 16 | **SOFTWARE SIMOTION 4** | 2020-10-14 → 2020-11-02 (+19d) | 2020-12-09 → 2020-12-28 (+19d) | 35.38d → 33.81d |  |  |  |  |
| 17 | Acondicionar versiones de software | 2020-10-14 → 2020-11-02 (+19d) | 2020-10-19 → 2020-11-06 (+18d) |  |  | 16.38d → 0d |  | constraint none → start no earlier than 2020-11-02 |
| 18 | Abrir y estudiar programa original de BSL | 2020-10-19 → 2020-11-06 (+18d) | 2020-10-19 → 2020-11-06 (+18d) |  |  | 16.38d → 0d |  |  |
| 19 | Abrir y estudiar programa original de CS | 2020-10-19 → 2020-11-06 (+18d) | 2020-10-20 → 2020-11-09 (+20d) |  |  | 16.38d → 0d |  |  |
| 20 | Abrir y estudiar Programa ejemplo de Simotion | 2020-10-20 → 2020-11-09 (+20d) | 2020-10-22 → 2020-11-11 (+20d) |  |  | 16.38d → 0d |  |  |
| 21 | **Programación Simotion 4** | 2020-10-22 → 2020-11-11 (+20d) | 2020-12-09 → 2020-12-28 (+19d) | 29.38d → 26.81d |  |  |  |  |
| 22 | Estudio y configuración doble comunicación | 2020-10-22 → 2020-11-11 (+20d) | 2020-10-23 → 2020-11-12 (+20d) |  |  | 16.38d → 0d |  |  |
| 23 | Configuración Hw | 2020-10-23 → 2020-11-12 (+20d) | 2020-10-26 → 2020-11-13 (+18d) |  |  | 16.38d → 0d |  |  |
| 24 | Definición estructura de programa | 2020-10-26 → 2020-11-13 (+18d) | 2020-10-27 → 2020-11-16 (+20d) |  |  | 16.38d → 0d |  |  |
| 25 | Programación Simotion 4 | 2020-10-27 → 2020-11-16 (+20d) | 2020-11-06 → 2020-11-27 (+21d) |  |  | 16.38d → 0d |  | constraint none → finish no earlier than 2020-11-26 |
| 26 | Pruebas de software | 2020-12-02 → 2020-11-27 (-5d) | 2020-12-09 → 2020-12-02 (-7d) |  |  |  | 25, 14 → 25 |  |
| 27 | Programa Simotion 4 OK | 2020-12-09 → 2020-12-28 (+19d) | 2020-12-09 → 2020-12-28 (+19d) |  |  | 0d → 42.56d | 26 → 14, 26 |  |
| 28 | **PEM Simotion 4** | 2020-12-10 → 2021-01-04 (+25d) | 2020-12-29 → 2021-01-18 (+20d) | 10.5d → 10d |  | 0d → 39.88d |  |  |
| 29 | Montaje y conexionado | 2020-12-10 → 2021-01-04 (+25d) | 2020-12-14 → 2021-01-05 (+22d) | 2d → 1d |  | 0d → 39.88d |  | constraint none → start no earlier than 2021-01-04; resources FRD → CRJ |
| 30 | SAT | 2020-12-15 → 2021-01-05 (+21d) | 2020-12-16 → 2021-01-06 (+21d) |  |  | 0d → 39.88d |  | resources FRD → CRJ |
| 31 | Carga modificaciones PLC BSL | 2020-12-16 → 2021-01-06 (+21d) | 2020-12-16 → 2021-01-06 (+21d) |  |  | 23d → 39.88d |  |  |
| 32 | Pruebas comunicación PLC BSL-Simotion 4 | 2020-12-16 → 2021-01-06 (+21d) | 2020-12-16 → 2021-01-06 (+21d) |  |  | 23d → 39.88d |  |  |
| 33 | Carga modificaciones PLC CS | 2020-12-16 → 2021-01-06 (+21d) | 2020-12-16 → 2021-01-06 (+21d) |  |  | 0d → 39.88d | 30 → 32 |  |
| 34 | Pruebas comunicación PLC CS-Simotion 4 | 2020-12-16 → 2021-01-07 (+22d) | 2020-12-16 → 2021-01-07 (+22d) |  |  | 0d → 39.88d |  |  |
| 35 | Pruebas de movimientos Simotion | 2020-12-16 → 2021-01-07 (+22d) | 2020-12-17 → 2021-01-08 (+22d) |  |  | 0d → 39.88d |  |  |
| 36 | Pruebas en vacío | 2020-12-17 → 2021-01-08 (+22d) | 2020-12-21 → 2021-01-12 (+22d) |  |  | 0d → 39.88d |  |  |
| 37 | Pruebas "Barra fantasma" | 2020-12-21 → 2021-01-12 (+22d) | 2020-12-22 → 2021-01-13 (+22d) |  |  | 0d → 39.88d |  |  |
| 38 | Pruebas con material | 2020-12-22 → 2021-01-13 (+22d) | 2020-12-29 → 2021-01-18 (+20d) |  |  | 0d → 39.88d |  |  |
| 39 | **SOFTWARE SIMOTION 2** | 2020-12-29 → 2020-12-02 (-27d) | 2021-01-22 → 2020-12-29 (-24d) | 16d? → 15d? |  |  |  |  |
| 40 | Abrir y estudiar programa original de SH18BM | 2020-12-29 → 2020-12-02 (-27d) | 2020-12-30 → 2020-12-03 (-27d) |  |  |  | 38 → 26 | constraint none → start no earlier than 2020-10-19 |
| 41 | Abrir y estudiar programa original de SH1B | 2020-12-30 → 2020-12-03 (-27d) | 2020-12-31 → 2020-12-04 (-27d) |  |  |  |  |  |
| 42 | Abrir y estudiar programa original de SH1B | 2020-12-31 → 2020-12-04 (-27d) | 2021-01-04 → 2020-12-09 (-26d) |  |  |  |  |  |
| 43 | **Programación Simotion 2** | 2021-01-04 → 2020-12-09 (-26d) | 2021-01-22 → 2020-12-29 (-24d) | 13d → 12d |  |  |  |  |
| 44 | Estudio y configuración doble comunicación | 2021-01-04 → 2020-12-09 (-26d) | 2021-01-05 → 2020-12-10 (-26d) |  |  |  |  |  |
| 45 | Configuración Hw | 2021-01-05 → 2020-12-10 (-26d) | 2021-01-06 → 2020-12-11 (-26d) |  |  |  |  |  |
| 46 | Definición estructura de programa | 2021-01-06 → 2020-12-11 (-26d) | 2021-01-07 → 2020-12-14 (-24d) |  |  |  |  |  |
| 47 | Programación Simotion 2 | 2021-01-07 → 2020-12-14 (-24d) | 2021-01-18 → 2020-12-24 (-25d) |  |  |  |  |  |
| 48 | Pruebas de software | 2021-01-18 → 2020-12-24 (-25d) | 2021-01-22 → 2020-12-29 (-24d) | 3d → 2d |  |  | Placa Simotion 2 OK, 47 → 47 |  |
| 49 | Programa Simotion 2 OK | 2021-01-22 → 2020-12-29 (-24d) | 2021-01-22 → 2020-12-29 (-24d) |  |  |  |  |  |
| 50 | **PEM Simotion 2** | 2020-12-03 → 2021-01-11 (+39d) | 2021-01-11 → 2021-01-28 (+17d) | 21d → 12.81d |  | 8.5d → 45.19d |  |  |
| 51 | Montaje y conexionado | 2020-12-03 → 2021-01-11 (+39d) | 2020-12-09 → 2021-01-13 (+35d) |  |  | 19d → 63.69d | Entrega placa Simotion 2 → none | constraint none → start no earlier than 2021-01-11; resources FRD → CRJ |
| 52 | SAT | 2020-12-09 → 2021-01-13 (+35d) | 2020-12-10 → 2021-01-14 (+35d) |  |  | 19d → 63.69d |  | resources FRD → CRJ |
| 53 | Carga modificaciones PLC CS | 2020-12-29 → 2021-01-18 (+20d) | 2020-12-29 → 2021-01-18 (+20d) |  |  | 8.5d → 39.88d | 52, 38 → 38, 49 |  |
| 54 | Pruebas comunicación PLC CS-Simotion 2 | 2020-12-29 → 2021-01-19 (+21d) | 2020-12-29 → 2021-01-19 (+21d) |  |  | 8.5d → 39.88d |  |  |
| 55 | Pruebas de movimientos Simotion | 2020-12-29 → 2021-01-19 (+21d) | 2020-12-30 → 2021-01-20 (+21d) |  |  | 8.5d → 39.88d |  |  |
| 56 | Pruebas en vacío | 2020-12-30 → 2021-01-20 (+21d) | 2021-01-04 → 2021-01-22 (+18d) |  |  | 8.5d → 39.88d |  |  |
| 57 | Pruebas "Barra fantasma" | 2021-01-04 → 2021-01-22 (+18d) | 2021-01-05 → 2021-01-25 (+20d) |  |  | 8.5d → 39.88d |  |  |
| 58 | Pruebas con material | 2021-01-05 → 2021-01-25 (+20d) | 2021-01-11 → 2021-01-28 (+17d) |  |  | 8.5d → 39.88d |  |  |

## Version 3 (saved 2020-10-29, file XDOC_PLA320001_A2.mpp)

Note of the change: Update planning

Last finish 2021-04-26 → 2021-05-13 (+17d). Complete tasks 1 → 4.

Added:

| ID | Task | Duration | Start | Finish | Predecessors | Resources |
| --- | --- | --- | --- | --- | --- | --- |
| 26 | Modificaciòn Programa s7-300 | 1d | 2020-12-15 | 2020-12-16 | 25 | PR_1 |

Changed:

| ID | Task | Start | Finish | Duration | Complete | Total float | Predecessors | Other |
| --- | --- | --- | --- | --- | --- | --- | --- | --- |
| 1 | **Relevo Previo** |  |  | 42d → 41.25d | 47% → 57% | 42.56d → 86.81d |  |  |
| 2 | Selección materiales principales (SIEMENS) |  |  | 1d → 0d |  |  |  | resources CRJ → COMP_1 |
| 3 | Compra de materiales Siemens |  | 2020-10-16 A |  | 50% → 100% | 42.56d → none |  | resources CCA → COMP_1 |
| 4 | VISITA A PLANTA |  |  |  |  |  |  | resources EMR; CRJ; FRD; GAJ → DIR_1; ING_1; PR_1; MTJ_1 |
| 5 | Selección materiales menores |  |  |  |  | 0.25d → 2.75d |  | resources CRJ → ING_1 |
| 6 | Compra materiales menores |  | 2020-11-12 A |  | 25% → 100% | 52.5d → none |  | resources CCA → COMP_1 |
| 7 | Recepción materiales menores |  |  |  |  | 35.12d → 59.12d | 6FS+10d → 6 | constraint none → start no earlier than 2020-11-30 |
| 8 | Recepción de materiales Siemens |  |  |  |  | 25.19d → 86.81d | 3FS+2mo → 3 |  |
| 9 | **INGENIERÍA/PLACA SIMOTION** |  |  | 27.94d → 27.88d | 13% → 11% | 74.06d → 86.75d |  |  |
| 10 | Confección de planos eléctricos |  |  |  |  | 91d → 103.56d |  | resources CRJ → ING_1 |
| 11 | Armado de tableros eléctricos con materiales menores |  | 2020-12-09 → 2020-12-16 (+7d) | 5d → 10d |  | 52.5d → 59.12d |  | constraint none → finish no earlier than 2020-12-09; resources GAJ; CRJ → MTJ_1 |
| 12 | Montaje de materiales Siemens |  | 2020-12-24 → 2020-12-23 (-1d) |  |  | 42.56d → 86.81d |  | resources GAJ; CRJ → MTJ_1; ING_1 |
| 13 | FAT | 2020-12-24 → 2020-12-23 (-1d) | 2020-12-28 → 2020-12-24 (-4d) |  |  | 42.56d → 86.81d |  | resources GAJ; CRJ → MTJ_1; ING_1 |
| 14 | Placas Simotion OK | 2020-12-28 → 2020-12-24 (-4d) | 2020-12-28 → 2020-12-24 (-4d) |  |  | 42.56d → 86.81d |  | resources GAJ; CRJ → MTJ_1; ING_1 |
| 15 | Entrega placas Simotion |  |  |  |  | 42.56d → 54.19d |  | constraint none → start no earlier than 2020-12-28; resources GAJ; CRJ → MTJ_1; ING_1 |
| 16 | **SOFTWARE SIMOTION 4** | 2020-11-02 A | 2020-12-28 → 2020-12-24 (-4d) | 33.81d → 33.06d | 0% → 10% | 0d → 41.94d |  |  |
| 17 | Acondicionar versiones de software | 2020-11-02 A | 2020-11-06 A |  | 0% → 100% | 0d → none |  | resources FRD → PR_1 |
| 18 | Abrir y estudiar programa original de BSL |  | 2020-11-06 → 2020-11-10 (+4d) | 4h → 2d |  |  |  | resources FRD → PR_1 |
| 19 | Abrir y estudiar programa original de CS | 2020-11-06 → 2020-11-10 (+4d) | 2020-11-09 → 2020-11-12 (+3d) | 4h → 2d |  |  |  | resources FRD → PR_1 |
| 20 | Abrir y estudiar Programa ejemplo de Simotion | 2020-11-09 → 2020-11-12 (+3d) | 2020-11-11 → 2020-11-19 (+8d) | 2d → 5d |  |  |  | resources FRD → PR_1 |
| 21 | **Programación Simotion 4** | 2020-11-11 → 2020-11-19 (+8d) | 2020-12-28 → 2020-12-24 (-4d) | 26.81d → 20.06d |  |  |  |  |
| 22 | Estudio y configuración doble comunicación | 2020-11-11 → 2020-11-19 (+8d) | 2020-11-12 → 2020-11-25 (+13d) | 1d → 2d |  |  |  | resources FRD → PR_1 |
| 23 | Configuración Hw | 2020-11-12 → 2020-11-25 (+13d) | 2020-11-13 → 2020-11-26 (+13d) |  |  |  |  | resources FRD → PR_1 |
| 24 | Definición estructura de programa | 2020-11-13 → 2020-11-26 (+13d) | 2020-11-16 → 2020-11-27 (+11d) |  |  |  |  | resources FRD → PR_1 |
| 25 | Programación Simotion 4 | 2020-11-16 → 2020-11-27 (+11d) | 2020-11-27 → 2020-12-15 (+18d) | 7d → 10d |  |  |  | resources FRD → PR_1 |
| 27 | Pruebas de software | 2020-11-27 → 2020-12-16 (+19d) | 2020-12-02 → 2020-12-22 (+20d) |  |  |  | 25 → 26 | resources FRD → PR_1 |
| 28 | Programa Simotion 4 OK | 2020-12-28 → 2020-12-24 (-4d) | 2020-12-28 → 2020-12-24 (-4d) |  |  | 42.56d → 86.81d |  |  |
| 30 | Montaje y conexionado |  |  |  |  | 39.88d → 51.44d |  | resources CRJ → ING_1 |
| 31 | SAT |  |  |  |  | 39.88d → 83.38d |  | resources CRJ → ING_1 |
| 32 | Carga modificaciones PLC BSL |  |  |  |  | 39.88d → 83.38d |  | resources FRD → PR_1 |
| 33 | Pruebas comunicación PLC BSL-Simotion 4 |  |  |  |  | 39.88d → 51.44d |  | resources FRD → PR_1 |
| 34 | Carga modificaciones PLC CS |  |  |  |  | 39.88d → 83.38d |  | resources FRD → PR_1 |
| 35 | Pruebas comunicación PLC CS-Simotion 4 |  |  |  |  | 39.88d → 51.44d |  | resources FRD → PR_1 |
| 36 | Pruebas de movimientos Simotion |  |  |  |  | 39.88d → 83.38d |  | resources FRD → PR_1 |
| 37 | Pruebas en vacío |  |  |  |  | 39.88d → 83.38d |  | resources FRD → PR_1 |
| 38 | Pruebas "Barra fantasma" |  |  |  |  | 39.88d → 51.44d |  | resources FRD → PR_1 |
| 39 | Pruebas con material |  |  |  |  | 39.88d → 83.38d |  | resources FRD → PR_1 |
| 40 | **SOFTWARE SIMOTION 2** | 2020-12-02 → 2020-12-22 (+20d) | 2020-12-29 → 2021-02-17 (+50d) | 15d? → 35d |  |  |  |  |
| 41 | Abrir y estudiar programa original de SH18BM | 2020-12-02 → 2020-12-22 (+20d) | 2020-12-03 → 2020-12-24 (+21d) | 1d → 2d |  |  |  | resources FRD → PR_1 |
| 42 | Abrir y estudiar programa original de SH1B | 2020-12-03 → 2020-12-24 (+21d) | 2020-12-04 → 2020-12-29 (+25d) | 1d → 2d |  |  |  | resources FRD → PR_1 |
| 43 | Abrir y estudiar programa original de SH1B | 2020-12-04 → 2020-12-29 (+25d) | 2020-12-09 → 2020-12-31 (+22d) | 1d? → 2d |  |  |  |  |
| 44 | **Programación Simotion 2** | 2020-12-09 → 2020-12-31 (+22d) | 2020-12-29 → 2021-02-17 (+50d) | 12d → 29d |  |  |  |  |
| 45 | Estudio y configuración doble comunicación | 2020-12-09 → 2020-12-31 (+22d) | 2020-12-10 → 2021-01-05 (+26d) | 1d → 2d |  |  |  | resources FRD → PR_1 |
| 46 | Configuración Hw | 2020-12-10 → 2021-01-05 (+26d) | 2020-12-11 → 2021-01-19 (+39d) |  |  |  |  | resources FRD → PR_1 |
| 47 | Definición estructura de programa | 2020-12-11 → 2021-01-19 (+39d) | 2020-12-14 → 2021-01-20 (+37d) |  |  |  |  | resources FRD → PR_1 |
| 48 | Programación Simotion 2 | 2020-12-14 → 2021-01-20 (+37d) | 2020-12-24 → 2021-02-11 (+49d) | 7d → 15d |  |  |  | resources FRD → PR_1 |
| 49 | Pruebas de software | 2020-12-24 → 2021-02-11 (+49d) | 2020-12-29 → 2021-02-17 (+50d) |  |  |  |  | resources FRD → PR_1 |
| 50 | Programa Simotion 2 OK | 2020-12-29 → 2021-02-17 (+50d) | 2020-12-29 → 2021-02-17 (+50d) |  |  |  |  |  |
| 51 | **PEM Simotion 2** |  | 2021-01-28 → 2021-03-01 (+32d) | 12.81d → 31.31d |  | 45.19d → 43.81d |  |  |
| 52 | Montaje y conexionado |  | 2021-01-13 → 2021-01-12 (-1d) | 2d → 1d |  | 63.69d → 109.19d |  | resources CRJ → ING_1 |
| 53 | SAT | 2021-01-13 → 2021-01-12 (-1d) | 2021-01-14 → 2021-01-13 (-1d) |  |  | 63.69d → 109.19d |  | resources CRJ → ING_1 |
| 54 | Carga modificaciones PLC | 2021-01-18 → 2021-02-17 (+30d) | 2021-01-18 → 2021-02-17 (+30d) |  |  | 39.88d → 32.94d |  | was named Carga modificaciones PLC CS; resources FRD → PR_1 |
| 55 | Pruebas comunicación PLC-Simotion 2 | 2021-01-19 → 2021-02-17 (+29d) | 2021-01-19 → 2021-02-17 (+29d) |  |  | 39.88d → 32.94d |  | was named Pruebas comunicación PLC CS-Simotion 2; resources FRD → PR_1 |
| 56 | Pruebas de movimientos Simotion | 2021-01-19 → 2021-02-18 (+30d) | 2021-01-20 → 2021-02-19 (+30d) |  |  | 39.88d → 32.94d |  | resources FRD → PR_1 |
| 57 | Pruebas en vacío | 2021-01-20 → 2021-02-19 (+30d) | 2021-01-22 → 2021-02-23 (+32d) |  |  | 39.88d → 32.94d |  | resources FRD → PR_1 |
| 58 | Pruebas "Barra fantasma" | 2021-01-22 → 2021-02-23 (+32d) | 2021-01-25 → 2021-02-24 (+30d) |  |  | 39.88d → 32.94d |  | resources FRD → PR_1 |
| 59 | Pruebas con material | 2021-01-25 → 2021-02-24 (+30d) | 2021-01-28 → 2021-03-01 (+32d) |  |  | 39.88d → 32.94d |  | resources FRD → PR_1 |
| 60 | **SOFTWARE SIMOTION 1** | 2020-12-29 → 2021-03-01 (+62d) | 2021-03-10 → 2021-03-31 (+21d) | 45d → 20d |  |  |  |  |
| 61 | Abrir y estudiar programa original de SH6 | 2020-12-29 → 2021-03-01 (+62d) | 2020-12-30 → 2021-03-03 (+63d) | 1d → 2d |  |  |  | resources FRD → PR_1 |
| 62 | Abrir y estudiar programa original de SH12 | 2020-12-30 → 2021-03-03 (+63d) | 2020-12-31 → 2021-03-05 (+64d) | 1d → 2d |  |  |  |  |
| 63 | **Programación Simotion 1** | 2020-12-31 → 2021-03-05 (+64d) | 2021-03-10 → 2021-03-31 (+21d) | 43d → 16d |  |  |  |  |
| 64 | Estudio y configuración doble comunicación | 2020-12-31 → 2021-03-05 (+64d) | 2021-01-04 → 2021-03-09 (+64d) | 1d → 2d |  |  |  | resources FRD → PR_1 |
| 65 | Configuración Hw | 2021-01-04 → 2021-03-09 (+64d) | 2021-01-05 → 2021-03-10 (+64d) |  |  |  |  | resources FRD → PR_1 |
| 66 | Definición estructura de programa | 2021-01-05 → 2021-03-10 (+64d) | 2021-01-29 → 2021-03-11 (+41d) |  |  |  |  | resources FRD → PR_1 |
| 67 | Programación Simotion1 | 2021-01-29 → 2021-03-12 (+42d) | 2021-03-08 → 2021-03-29 (+21d) | 7d → 10d |  |  |  | resources FRD → PR_1 |
| 68 | Pruebas de software | 2021-03-08 → 2021-03-29 (+21d) | 2021-03-10 → 2021-03-31 (+21d) |  |  |  |  | resources FRD → PR_1 |
| 69 | Programa Simotion 1 OK | 2021-03-10 → 2021-03-31 (+21d) | 2021-03-10 → 2021-03-31 (+21d) |  |  |  |  |  |
| 70 | **PEM Simotion 1** |  | 2021-03-19 → 2021-04-13 (+25d) | 39.62d → 54.12d |  | 22.38d → 20.5d |  |  |
| 71 | Montaje y conexionado |  | 2021-01-20 → 2021-01-19 (-1d) | 2d → 1d |  | 59d → 104.5d |  | resources CRJ → ING_1 |
| 72 | SAT | 2021-01-20 → 2021-01-19 (-1d) | 2021-01-21 → 2021-01-20 (-1d) |  |  | 59d → 104.5d |  | resources CRJ → ING_1 |

| ID | Task | Start | Finish | Duration | Total float | Predecessors | Other |
| --- | --- | --- | --- | --- | --- | --- | --- |
| 73 | Carga modificaciones PLC | 2021-03-10 → 2021-03-31 (+21d) | 2021-03-10 → 2021-04-01 (+22d) |  | 14.88d → 0d |  | was named Carga modificaciones PLC CS; resources FRD → PR_1 |
| 74 | Pruebas comunicación PLC-Simotion 1 | 2021-03-10 → 2021-04-01 (+22d) | 2021-03-10 → 2021-04-01 (+22d) |  | 14.88d → 0d |  | was named Pruebas comunicación PLC CS-Simotion 1; resources FRD → PR_1 |
| 75 | Pruebas de movimientos Simotion | 2021-03-10 → 2021-04-01 (+22d) | 2021-03-11 → 2021-04-05 (+25d) |  | 14.88d → 0d |  | resources FRD → PR_1 |
| 76 | Pruebas en vacío | 2021-03-12 → 2021-04-05 (+24d) | 2021-03-15 → 2021-04-07 (+23d) | 1d → 2d | 14.88d → 0d |  | resources FRD → PR_1 |
| 77 | Pruebas "Barra fantasma" | 2021-03-15 → 2021-04-07 (+23d) | 2021-03-16 → 2021-04-08 (+23d) |  | 14.88d → 0d |  | resources FRD → PR_1 |
| 78 | Pruebas con material | 2021-03-16 → 2021-04-08 (+23d) | 2021-03-19 → 2021-04-13 (+25d) |  | 14.88d → 0d |  | resources FRD → PR_1 |
| 79 | **SOFTWARE SIMOTION 3** | 2021-03-23 → 2021-04-13 (+21d) | 2021-04-14 → 2021-05-03 (+19d) |  |  |  |  |
| 80 | Abrir y estudiar programa original de SH18RM | 2021-03-23 → 2021-04-13 (+21d) | 2021-03-25 → 2021-04-15 (+21d) | 1d → 2d |  | 69 → 69, 78 | resources FRD → PR_1 |
| 81 | **Programación Simotion 3** | 2021-03-25 → 2021-04-15 (+21d) | 2021-04-14 → 2021-05-03 (+19d) | 12d → 11d |  |  | was named Programación Simotion 1 |
| 82 | Estudio y configuración doble comunicación | 2021-03-25 → 2021-04-15 (+21d) | 2021-03-26 → 2021-04-20 (+25d) | 1d → 2d |  |  | resources FRD → PR_1 |
| 83 | Configuración Hw | 2021-03-26 → 2021-04-20 (+25d) | 2021-03-29 → 2021-04-21 (+23d) |  |  |  | resources FRD → PR_1 |
| 84 | Definición estructura de programa | 2021-03-29 → 2021-04-21 (+23d) | 2021-03-30 → 2021-04-22 (+23d) |  |  |  | resources FRD → PR_1 |
| 85 | Programación Simotion | 2021-03-30 → 2021-04-22 (+23d) | 2021-04-12 → 2021-04-29 (+17d) | 7d → 5d |  |  | was named Programación Simotion1; resources FRD → PR_1 |
| 86 | Pruebas de software | 2021-04-12 → 2021-04-29 (+17d) | 2021-04-14 → 2021-05-03 (+19d) |  |  |  | resources FRD → PR_1 |
| 87 | Programa Simotion 3 OK | 2021-04-14 → 2021-05-03 (+19d) | 2021-04-14 → 2021-05-03 (+19d) |  |  |  | was named Programa Simotion 1 OK |
| 88 | **PEM Simotion 3** |  | 2021-04-26 → 2021-05-13 (+17d) | 52.62d → 65.25d |  |  |  |
| 89 | Montaje y conexionado |  | 2021-02-03 → 2021-02-02 (-1d) | 2d → 1d | 31.25d → 95.12d |  | resources CRJ → ING_1 |
| 90 | SAT | 2021-02-03 → 2021-02-02 (-1d) | 2021-02-04 → 2021-02-03 (-1d) |  | 31.25d → 95.12d |  | resources CRJ → ING_1 |
| 91 | Carga modificaciones PLC | 2021-04-14 → 2021-05-03 (+19d) | 2021-04-14 → 2021-05-03 (+19d) |  |  |  | was named Carga modificaciones PLC CS; resources FRD → PR_1 |
| 92 | Pruebas comunicación PLC-Simotion | 2021-04-14 → 2021-05-03 (+19d) | 2021-04-14 → 2021-05-04 (+20d) |  |  |  | was named Pruebas comunicación PLC CS-Simotion 1; resources FRD → PR_1 |
| 93 | Pruebas de movimientos Simotion | 2021-04-14 → 2021-05-04 (+20d) | 2021-04-15 → 2021-05-05 (+20d) |  |  |  | resources FRD → PR_1 |
| 94 | Pruebas en vacío | 2021-04-15 → 2021-05-05 (+20d) | 2021-04-19 → 2021-05-07 (+18d) |  |  |  | resources FRD → PR_1 |
| 95 | Pruebas "Barra fantasma" | 2021-04-19 → 2021-05-07 (+18d) | 2021-04-20 → 2021-05-10 (+20d) |  |  |  | resources FRD → PR_1 |
| 96 | Pruebas con material | 2021-04-21 → 2021-05-10 (+19d) | 2021-04-26 → 2021-05-13 (+17d) |  |  |  | resources FRD → PR_1 |
